# Integrated Design Project

Schedule from MS Project, 2020-07-14 to 2021-06-30, costs in ৳, A marks actual dates.
Microsoft

## Calendars

- Standard: Mon-Fri 08:00-12:00, 13:00-17:00; Sat-Sun off.

## Resources

| Resource | Cost per use |
| --- | --- |
| Sumaiya Kashmin Zim |  |
| Zannatul Ferdous |  |
| Eusha Khan |  |
| Fardeen Ashraf |  |
| Shahir Zaoad |  |
| Web Camera | 714.29 |
| Accessories | 1000 |
| Field Work Cost |  |
| Transport Cost |  |
| Servo motor | 500 |
| Makeshift conveyer belt material | 500 |
| Camera |  |
| Makeshift conveyor belt material |  |
| Jetson nano |  |

## Schedule

| ID | WBS | Task | Type | Duration | Start | Finish | Predecessors | Complete | Actual start | Actual finish | Baseline 1 start | Baseline 1 finish | Constraint | Resources | Work | Actual work | Cost | Actual cost |
| --- | --- | --- | --- | --- | --- | --- | --- | --- | --- | --- | --- | --- | --- | --- | --- | --- | --- | --- |
| 1 | 1 | **Food Freshness & Defection Detector** |  | 250d | 2020-07-16 A | 2021-06-30 |  | 100% |  | 2021-06-24 | 2020-07-16 | 2021-03-08 |  |  | 5881.2h | 5881.2h | 20,768 | 20,768 |
| 2 | 1.1 | **Project Initialization** |  | 15d | 2020-07-16 A | 2020-08-05 A |  | 100% |  |  | 2020-07-16 | 2020-08-06 |  |  |  |  |  |  |
| 3 | 1.1.1 | Group Forming | milestone | 0d | 2020-07-16 A | 2020-07-16 A |  | 100% |  |  | 2020-07-16 | 2020-07-16 |  |  |  |  |  |  |
| 4 | 1.1.2 | Initial Project Proposal |  | 7d | 2020-07-17 A | 2020-07-27 A | 3 | 100% |  |  | 2020-07-17 | 2020-07-27 |  |  |  |  |  |  |
| 5 | 1.1.3 | Modified Project proposal |  | 7d | 2020-07-28 A | 2020-08-05 A | 4 | 100% |  |  | 2020-07-28 | 2020-08-05 |  |  |  |  |  |  |
| 6 | 1.1.5 | Approval | milestone | 0d | 2020-08-05 A | 2020-08-05 A | 5 | 100% |  |  | 2020-08-06 | 2020-08-06 |  |  |  |  |  |  |
| 7 | 1.2 | **Planning** |  | 21d | 2020-08-06 A | 2020-09-03 A |  | 100% |  |  | 2020-08-07 | 2020-08-26 |  |  | 392h | 392h |  |  |
| 8 | 1.2.1 | Project Scheduling |  | 7d | 2020-08-06 A | 2020-09-03 A | 6 | 100% |  |  | 2020-08-07 | 2020-08-17 |  | Fardeen Ashraf; Shahir Zaoad; Sumaiya Kashmin Zim; Zannatul Ferdous | 168h | 168h |  |  |
| 9 | 1.2.2 | **Micro Plan** |  | 6d | 2020-08-17 A | 2020-08-24 A |  | 100% |  |  | 2020-08-18 | 2020-08-25 |  |  | 192h | 192h |  |  |
| 10 | 1.2.2.1 | Micro Plan Session-1 |  | 3d | 2020-08-17 A | 2020-08-19 A | 8 | 100% |  |  | 2020-08-18 | 2020-08-20 |  | Eusha Khan; Fardeen Ashraf; Zannatul Ferdous; Sumaiya Kashmin Zim; Shahir Zaoad | 72h | 72h |  |  |
| 11 | 1.2.2.2 | Micro Plan Session-2 |  | 3d | 2020-08-20 A | 2020-08-24 A | 10 | 100% |  |  | 2020-08-21 | 2020-08-25 |  | Eusha Khan; Fardeen Ashraf; Shahir Zaoad; Sumaiya Kashmin Zim; Zannatul Ferdous | 120h | 120h |  |  |
| 12 | 1.2.3 | **Detail Plan** |  | 8d | 2020-08-25 A | 2020-09-03 |  | 100% |  | 2020-08-27 | 2020-08-25 | 2020-08-26 |  |  | 32h | 32h |  |  |
| 13 | 1.2.3.1 | Detail plan allocation |  | 1d | 2020-08-25 A | 2020-08-27 A | 11 | 100% |  |  | 2020-08-25 | 2020-08-25 |  | Eusha Khan; Fardeen Ashraf; Shahir Zaoad; Sumaiya Kashmin Zim; Zannatul Ferdous | 32h | 32h |  |  |
| 14 | 1.2.3.2 | Detail plan presentation | milestone | 0d | 2020-08-25 A | 2020-08-25 A | 13 | 100% |  |  | 2020-08-26 | 2020-08-26 |  | Eusha Khan; Fardeen Ashraf; Shahir Zaoad; Sumaiya Kashmin Zim; Zannatul Ferdous |  |  |  |  |
| 15 | 1.3 | **Field Work** |  | 52d | 2020-08-26 A | 2020-11-05 A |  | 100% |  |  | 2020-08-27 | 2020-09-14 |  | Field Work Cost [0.1%] | 696h | 696h |  |  |
| 16 | 1.3.1 | Hardware Allocation |  | 12d | 2020-08-26 A | 2020-10-06 A | 14 | 100% |  |  | 2020-08-27 | 2020-08-31 | finish no earlier than 2020-09-15 | Fardeen Ashraf; Shahir Zaoad; Sumaiya Kashmin Zim; Zannatul Ferdous; Eusha Khan | 288h | 288h |  |  |
| 17 | 1.3.2 | Sample collection for object Detection |  | 8d | 2020-09-16 A | 2020-09-25 A | 16 | 100% |  |  | 2020-09-01 | 2020-09-07 | finish no earlier than 2020-09-25 | Fardeen Ashraf; Shahir Zaoad; Sumaiya Kashmin Zim; Zannatul Ferdous; Eusha Khan | 248h | 248h |  |  |
| 18 | 1.3.3 | Sample Collection for Defection Detection | manual | 5d | 2020-09-20 A | 2020-09-30 A | 17 | 100% |  |  | 2020-09-08 | 2020-09-14 | start no earlier than 2020-09-20 | Shahir Zaoad; Sumaiya Kashmin Zim; Zannatul Ferdous; Fardeen Ashraf; Eusha Khan | 160h | 160h |  |  |
| 19 | 1.3.4 | Sample Collection Finished | milestone | 0d | 2020-09-30 A | 2020-09-30 A | 18 | 100% |  |  |  |  |  |  |  |  |  |  |
| 20 | 1.3 | **Development** |  | 193d | 2020-10-01 | 2021-06-28 |  | 100% | 2021-03-21 | 2021-06-21 | 2020-09-15 | 2021-02-24 |  |  | 4473.2h | 4473.2h | 20,768 | 20,768 |
| 21 | 1.4.1 | Buy Components | manual | 14d | 2021-03-21 A | 2021-04-07 A |  | 100% |  |  |  |  |  | Camera; Eusha Khan; Fardeen Ashraf; Makeshift conveyer belt material; Servo motor; Shahir Zaoad; Sumaiya Kashmin Zim; Transport Cost [0.1%]; Web Camera; Zannatul Ferdous | 672h | 672h | 3,368 | 3,368 |
| 22 | 1.4.2 | Front End Design |  | 7d | 2021-04-05 A | 2021-04-13 A |  | 100% |  |  |  |  | start no earlier than 2021-04-05 | Shahir Zaoad; Sumaiya Kashmin Zim; Zannatul Ferdous | 168h | 168h |  |  |
| 23 | 1.4.3 | **Object Detection** |  | 52d | 2021-03-21 | 2021-05-31 A |  | 100% | 2021-03-30 |  | 2020-11-09 | 2020-12-01 |  |  | 1648h | 1648h | 17,400 | 17,400 |
| 24 | 1.4.3.1 | Image Pre Processing(Resizing Image, Background Subtraction) |  | 10d | 2021-03-30 A | 2021-04-12 A |  | 100% |  |  |  |  | finish no earlier than 2021-04-12 | Fardeen Ashraf; Shahir Zaoad; Transport Cost [0.1%]; Sumaiya Kashmin Zim; Zannatul Ferdous; Eusha Khan | 240h | 240h |  |  |
| 25 | 1.4.3.2 | Model train and test with binary classification algorithms to detect fruit | manual | 10d | 2021-04-13 A | 2021-04-26 A |  | 100% |  |  |  |  | finish no earlier than 2021-05-31 | Eusha Khan; Fardeen Ashraf; Sumaiya Kashmin Zim; Zannatul Ferdous; Shahir Zaoad | 320h | 320h |  |  |
| 26 | 1.4.3.3 | Image preprocessing (Gaussian Filtering) + feature extraction of image (Geometrical feature, color feature) & Full Frontend |  | 10d | 2021-04-20 A | 2021-05-03 A |  | 100% |  |  | 2020-11-09 | 2020-11-12 | finish no earlier than 2021-05-03 | Fardeen Ashraf; Shahir Zaoad; Sumaiya Kashmin Zim; Zannatul Ferdous | 640h | 640h |  |  |
| 27 | 1.4.3.4 | Setting up Jetson Nano |  | 3d | 2021-05-03 A | 2021-05-06 A |  | 100% |  |  | 2020-11-13 | 2020-11-17 |  | Fardeen Ashraf; Sumaiya Kashmin Zim; Shahir Zaoad; Zannatul Ferdous | 48h | 48h | 13,900 | 13,900 |
| 28 | 1.4.3.5 | Connecting Live data from camera | manual | 6d | 2021-05-17 A | 2021-05-24 A | 27 | 100% |  |  | 2020-11-18 | 2020-11-20 |  | Eusha Khan; Fardeen Ashraf; Sumaiya Kashmin Zim; Web Camera; Zannatul Ferdous; Camera; Shahir Zaoad | 240h | 240h |  |  |
| 29 | 1.4.3.6 | Integrating image processing models with web camera |  | 5d | 2021-05-25 A | 2021-05-31 A | 28 | 100% |  |  | 2020-11-23 | 2020-11-27 |  | Fardeen Ashraf; Shahir Zaoad; Sumaiya Kashmin Zim; Web Camera; Camera; Eusha Khan; Zannatul Ferdous | 160h | 160h | 3,500 | 3,500 |
| 30 | 1.4.3.7 | Result | milestone | 0d | 2021-05-31 A | 2021-05-31 A | 29 | 100% |  |  | 2020-11-30 | 2020-12-01 |  |  |  |  |  |  |

| ID | WBS | Task | Type | Duration | Start | Finish | Predecessors | Complete | Actual finish | Baseline 1 start | Baseline 1 finish | Constraint | Resources | Work | Actual work |
| --- | --- | --- | --- | --- | --- | --- | --- | --- | --- | --- | --- | --- | --- | --- | --- |
| 31 | 1.4.4 | **Freshness Detection** |  | 35d | 2021-05-04 A | 2021-06-21 A |  | 100% |  | 2020-12-02 | 2020-12-24 |  |  | 1704h | 1704h |
| 32 | 1.4.4.1 | Real time image Segmentation (Fuzzy segmentation, Refinement of defected region) + Real time image feature extraction (texture feature) | manual | 10d | 2021-05-04 A | 2021-05-17 A |  | 100% |  |  |  | finish no earlier than 2021-05-17 | Eusha Khan; Fardeen Ashraf; Shahir Zaoad; Sumaiya Kashmin Zim; Zannatul Ferdous | 400h | 400h |
| 33 | 1.4.4.2 | Model train and test with binary classification algorithms to detect defection in fruit | manual | 10d | 2021-05-11 A | 2021-05-24 A | 30 | 100% |  | 2020-12-02 | 2020-12-07 | start no earlier than 2021-05-11 | Eusha Khan; Fardeen Ashraf; Shahir Zaoad; Sumaiya Kashmin Zim; Zannatul Ferdous | 376h | 376h |
| 34 | 1.4.4.3 | Setting up Jetson Nano | manual | 3d | 2021-05-25 A | 2021-05-27 A | 33 | 100% |  | 2020-12-08 | 2020-12-10 |  | Fardeen Ashraf; Shahir Zaoad; Sumaiya Kashmin Zim; Zannatul Ferdous | 48h | 48h |
| 35 | 1.4.4.4 | Connecting Live data from camera |  | 8d | 2021-05-27 A | 2021-06-07 A | 34 | 100% |  | 2020-12-11 | 2020-12-15 |  | Fardeen Ashraf; Shahir Zaoad; Sumaiya Kashmin Zim; Web Camera [200%]; Zannatul Ferdous; Camera | 320h | 320h |
| 36 | 1.4.4.5 | Integrating image processing models with web camera |  | 8d | 2021-06-10 A | 2021-06-21 A | 35 | 100% |  | 2020-12-16 | 2020-12-22 |  | Eusha Khan; Fardeen Ashraf; Shahir Zaoad; Sumaiya Kashmin Zim; Web Camera; Zannatul Ferdous; Camera | 320h | 320h |
| 37 | 1.4.4.6 | Real time image preprocessing (background segmentation, filtering) |  | 6d | 2021-06-14 A | 2021-06-21 A |  | 100% |  |  |  | finish no earlier than 2021-06-14 | Fardeen Ashraf; Sumaiya Kashmin Zim; Web Camera; Camera; Shahir Zaoad; Zannatul Ferdous | 240h | 240h |
| 38 | 1.4.4.7 | Result | milestone | 0d | 2021-06-21 A | 2021-06-21 A | 36 | 100% |  | 2020-12-23 | 2020-12-24 |  |  |  |  |
| 39 | 1.4.5 | **Integration** |  | 3d | 2021-06-17 A | 2021-06-21 A |  | 100% |  | 2020-12-25 | 2020-12-29 |  |  | 40.24h | 40.24h |
| 40 | 1.4.5.1 | Connecting Jetson Nano and Arduino |  | 1d | 2021-06-17 A | 2021-06-17 A | 38 | 100% |  | 2020-12-25 | 2020-12-25 |  | Web Camera; Camera; Jetson nano [1%]; Shahir Zaoad; Fardeen Ashraf; Sumaiya Kashmin Zim; Zannatul Ferdous | 8.08h | 8.08h |
| 41 | 1.4.5.2 | Configuration for sending info between Jetson Nano and Arduino |  | 2d | 2021-06-18 A | 2021-06-21 A | 40 | 100% |  | 2020-12-28 | 2020-12-29 |  | Fardeen Ashraf; Web Camera; Camera; Jetson nano; Shahir Zaoad; Sumaiya Kashmin Zim; Zannatul Ferdous | 32.16h | 32.16h |
| 42 | 1.3.7 | **Fruit separator** |  | 6d | 2021-06-09 A | 2021-06-16 A |  | 100% |  | 2020-12-30 | 2021-02-24 |  |  | 240.96h | 240.96h |
| 43 | 1.3.7.1 | Adjusting the Pusher with conveyor belt and servo | manual | 2d | 2021-06-09 A | 2021-06-10 A | 41 | 100% |  | 2020-12-30 | 2020-12-30 |  | Servo motor; Sumaiya Kashmin Zim; Makeshift conveyor belt material [1%]; Fardeen Ashraf; Shahir Zaoad; Zannatul Ferdous |  |  |
| 44 | 1.3.7.2 | Automating the servo based on the result of Jetson Nano | manual | 5d | 2021-06-10 A | 2021-06-16 A | 43 | 100% |  | 2020-12-31 | 2021-02-24 | start no earlier than 2021-06-10 | Fardeen Ashraf; Servo motor [300%]; Sumaiya Kashmin Zim; Web Camera [300%]; Camera; Makeshift conveyor belt material [1%]; Jetson nano [1%]; Shahir Zaoad; Zannatul Ferdous | 240.96h | 240.96h |
| 45 | 1.4.6.3 | Development Finish | milestone | 0d | 2021-06-16 A | 2021-06-16 A | 44 | 100% |  |  |  | finish no earlier than 2021-06-16 |  |  |  |
| 46 | 1.4 | **Testing** |  | 8d | 2021-06-15 A | 2021-06-24 A |  | 100% |  | 2021-02-25 | 2021-03-03 |  |  | 320h | 320h |
| 47 | 1.4.1 | Real Time Testing Food Detection |  | 5d | 2021-06-15 A | 2021-06-22 A | 44 | 100% |  | 2021-02-25 | 2021-02-25 |  | Eusha Khan; Fardeen Ashraf; Shahir Zaoad; Sumaiya Kashmin Zim; Zannatul Ferdous | 200h | 200h |
| 48 | 1.4.2 | Real Time Testing of defection detection |  | 2d | 2021-06-20 A | 2021-06-23 A | 47 | 100% |  | 2021-02-26 | 2021-02-26 |  | Eusha Khan; Fardeen Ashraf; Shahir Zaoad; Sumaiya Kashmin Zim; Zannatul Ferdous | 80h | 80h |
| 49 | 1.4.3 | Overall Testing |  | 1d | 2021-06-24 A | 2021-06-24 A | 48 | 100% |  | 2021-03-01 | 2021-03-02 |  | Eusha Khan; Fardeen Ashraf; Shahir Zaoad; Sumaiya Kashmin Zim; Zannatul Ferdous | 40h | 40h |
| 50 | 1.4.4 | Final Testing | milestone | 0d | 2021-06-24 A | 2021-06-24 A | 49 | 100% |  | 2021-03-03 | 2021-03-03 | start no earlier than 2021-06-23 |  |  |  |
| 51 | 1.4.5 | Testing Complete | milestone | 0d | 2021-06-24 A | 2021-06-24 A | 50 | 100% |  | 2021-03-03 | 2021-03-03 |  |  |  |  |
| 52 | 1.5 | **Document** |  | 250d | 2020-07-14 A | 2021-06-29 | 3 | 100% | 2021-06-14 | 2021-03-04 | 2021-03-04 |  |  | 8928h | 8928h |
| 53 | 2.1 | SRS document | manual | 209d | 2020-07-14 A | 2021-04-30 A |  | 100% |  |  |  |  | Eusha Khan; Fardeen Ashraf; Shahir Zaoad; Sumaiya Kashmin Zim; Zannatul Ferdous | 8360h | 8360h |
| 54 | 2.2 | UI design report | manual | 6d | 2021-04-05 A | 2021-04-12 A |  | 100% |  |  |  |  | Zannatul Ferdous; Sumaiya Kashmin Zim; Shahir Zaoad | 48h | 48h |
| 55 | 2.3 | System development report | manual | 5d | 2021-04-13 A | 2021-04-19 A |  | 100% |  |  |  |  | Shahir Zaoad; Fardeen Ashraf; Zannatul Ferdous | 80h | 80h |
| 56 | 2.4 | Project plan document | manual | 5d | 2021-04-20 A | 2021-04-26 A |  | 100% |  |  |  |  | Fardeen Ashraf; Zannatul Ferdous; Shahir Zaoad | 80h | 80h |
| 57 | 2.5 | Article writing document | manual | 5d | 2021-04-27 A | 2021-05-03 A |  | 100% |  |  |  |  | Shahir Zaoad; Zannatul Ferdous; Sumaiya Kashmin Zim | 80h | 80h |
| 58 | 2.6 | User manual document | manual | 5d | 2021-05-18 A | 2021-05-24 A |  | 100% |  |  |  |  | Eusha Khan; Zannatul Ferdous; Shahir Zaoad | 80h | 80h |
| 59 | 2.7 | Help doc | manual | 5d | 2021-05-18 A | 2021-05-24 A |  | 100% |  |  |  |  | Zannatul Ferdous; Sumaiya Kashmin Zim; Shahir Zaoad | 40h | 40h |
| 60 | 2.8 | Software testing document | manual | 5d | 2021-05-25 A | 2021-05-31 A |  | 100% |  |  |  |  | Eusha Khan; Sumaiya Kashmin Zim; Shahir Zaoad; Zannatul Ferdous | 80h | 80h |
| 61 | 1.6 | Experiment design document | manual | 10d | 2021-06-01 A | 2021-06-14 A |  | 100% |  | 2021-03-05 | 2021-03-05 | start no earlier than 2021-06-01 | Sumaiya Kashmin Zim; Zannatul Ferdous; Eusha Khan; Fardeen Ashraf; Shahir Zaoad | 80h | 80h |

| ID | WBS | Task | Duration | Start | Finish | Predecessors | Complete | Actual start | Baseline 1 start | Baseline 1 finish | Constraint | Resources | Work | Actual work |
| --- | --- | --- | --- | --- | --- | --- | --- | --- | --- | --- | --- | --- | --- | --- |
| 62 | 1.7 | **Complete Project** | 12d | 2021-06-15 | 2021-06-30 A | 61 | 100% | 2021-06-30 | 2021-03-08 | 2021-03-08 |  |  | 40h | 40h |
| 63 | 3.1 | Deployment | 1d | 2021-06-30 A | 2021-06-30 A |  | 100% |  | 2021-03-08 | 2021-03-08 | finish no earlier than 2021-06-30 | Eusha Khan; Fardeen Ashraf; Shahir Zaoad; Sumaiya Kashmin Zim; Zannatul Ferdous | 40h | 40h |
