Schedule from MS Project, 2020-07-16 to 2021-09-13, costs in ৳, A marks actual dates.
Microsoft

## Calendars

- Standard: Mon-Fri 08:00-12:00, 13:00-17:00; Sat-Sun off.

## Resources

| Resource | Cost per use |
| --- | --- |
| Sumaiya Kashmin Zim |  |
| Zannatul Ferdous |  |
| Eusha Khan |  |
| Fardeen Ashraf |  |
| Shahir Zaoad |  |
| Raspberry Pi 4 Model B 4GB no1 | 722.22 |
| Raspberry Pi 4 Model B 4GB no2 | 2166.67 |
| Pi Camera | 214.29 |
| Web Camera | 714.29 |
| Accessories | 1000 |
| Field Work Cost |  |
| Transport Cost |  |
| Servo motor | 500 |
| Makeshift conveyer belt material | 500 |

## Schedule

| ID | WBS | Task | Type | Duration | Start | Finish | Predecessors | Complete | Remaining | Baseline 1 start | Baseline 1 finish | Total slack | Free slack | Constraint | Resources | Work | Actual work | Cost | Actual cost |
| --- | --- | --- | --- | --- | --- | --- | --- | --- | --- | --- | --- | --- | --- | --- | --- | --- | --- | --- | --- |
| 1 | 1 | **Food Freshness & Defection Detector** |  | 303d? | 2020-07-16 A | 2021-09-13 |  | 38% | 188.66d? | 2020-07-16 | 2021-03-08 | 0d |  |  |  | 4152h | 1350h | 23,150.85 | 1,000 |
| 2 | 1.1 | **Project Initialization** |  | 15d? | 2020-07-16 A | 2020-08-05 A |  | 100% |  | 2020-07-16 | 2020-08-06 |  |  |  |  |  |  |  |  |
| 3 | 1.1.1 | Group Forming |  | 1d? | 2020-07-16 A | 2020-07-16 A |  | 100% |  | 2020-07-16 | 2020-07-16 |  |  |  |  |  |  |  |  |
| 4 | 1.1.2 | Initial Project Proposal |  | 7d | 2020-07-17 A | 2020-07-27 A | 3 | 100% |  | 2020-07-17 | 2020-07-27 |  |  |  |  |  |  |  |  |
| 5 | 1.1.3 | Modified Project proposal |  | 7d | 2020-07-28 A | 2020-08-05 A | 4 | 100% |  | 2020-07-28 | 2020-08-05 |  |  |  |  |  |  |  |  |
| 6 | 1.1.5 | Approval | milestone | 0d? | 2020-08-05 A | 2020-08-05 A | 5 | 100% |  | 2020-08-06 | 2020-08-06 |  |  |  |  |  |  |  |  |
| 7 | 1.2 | **Planning** |  | 14d? | 2020-08-06 A | 2020-08-25 A |  | 100% |  | 2020-08-07 | 2020-08-26 |  |  |  |  | 232h | 232h |  |  |
| 8 | 1.2.1 | Project Scheduling |  | 7d | 2020-08-06 A | 2020-08-14 A | 6 | 100% |  | 2020-08-07 | 2020-08-17 |  |  |  |  |  |  |  |  |
| 9 | 1.2.2 | **Micro Plan** |  | 6d | 2020-08-17 A | 2020-08-24 A |  | 100% |  | 2020-08-18 | 2020-08-25 |  |  |  |  | 192h | 192h |  |  |
| 10 | 1.2.2.1 | Micro Plan Session-1 |  | 3d | 2020-08-17 A | 2020-08-19 A | 8 | 100% |  | 2020-08-18 | 2020-08-20 |  |  |  | Eusha Khan; Fardeen Ashraf; Zannatul Ferdous | 72h | 72h |  |  |
| 11 | 1.2.2.2 | Micro Plan Session-2 |  | 3d | 2020-08-20 A | 2020-08-24 A | 10 | 100% |  | 2020-08-21 | 2020-08-25 |  |  |  | Eusha Khan; Fardeen Ashraf; Shahir Zaoad; Sumaiya Kashmin Zim; Zannatul Ferdous | 120h | 120h |  |  |
| 12 | 1.2.3 | **Detail Plan** |  | 1d? | 2020-08-25 A | 2020-08-25 A |  | 100% |  | 2020-08-25 | 2020-08-26 |  |  |  |  | 40h | 40h |  |  |
| 13 | 1.2.3.1 | Detail plan allocation |  | 1d | 2020-08-25 A | 2020-08-25 A | 11 | 100% |  | 2020-08-25 | 2020-08-25 |  |  |  | Eusha Khan; Fardeen Ashraf; Shahir Zaoad; Sumaiya Kashmin Zim; Zannatul Ferdous | 40h | 40h |  |  |
| 14 | 1.2.3.2 | Detail plan presentation | milestone | 0d? | 2020-08-25 A | 2020-08-25 A | 13 | 100% |  | 2020-08-26 | 2020-08-26 |  |  |  | Eusha Khan; Fardeen Ashraf; Shahir Zaoad; Sumaiya Kashmin Zim; Zannatul Ferdous |  |  |  |  |
| 15 | 1.3 | **Field Work** |  | 10d | 2020-08-26 A | 2020-09-08 A |  | 100% |  | 2020-08-27 | 2020-09-14 |  |  |  | Field Work Cost [0.1%] | 192h | 192h |  |  |
| 16 | 1.3.1 | Hardware Allocation |  | 3d | 2020-08-26 A | 2020-08-28 A | 14 | 100% |  | 2020-08-27 | 2020-08-31 |  |  |  | Fardeen Ashraf | 24h | 24h |  |  |
| 17 | 1.3.2 | Sample collection for object Detection |  | 2d | 2020-08-31 A | 2020-09-01 A | 16 | 100% |  | 2020-09-01 | 2020-09-07 |  |  |  | Fardeen Ashraf; Shahir Zaoad; Sumaiya Kashmin Zim | 48h | 48h |  |  |
| 18 | 1.3.3 | Sample Collection for Defection Detection |  | 5d | 2020-09-02 A | 2020-09-08 A | 17 | 100% |  | 2020-09-08 | 2020-09-14 |  |  |  | Shahir Zaoad; Sumaiya Kashmin Zim; Zannatul Ferdous | 120h | 120h |  |  |
| 19 | 1.3.4 | Sample Collection Finished | milestone | 0d | 2020-09-08 A | 2020-09-08 A | 18 | 100% |  |  |  |  |  |  |  |  |  |  |  |
| 20 | 1.3 | **Development** |  | 245d | 2020-09-09 A | 2021-08-17 |  | 40% | 145.83d | 2020-09-15 | 2021-02-24 | 19d |  |  |  | 3008h | 926h | 23,150.85 | 1,000 |
| 21 | 1.3.4 | Buy Components |  | 2d | 2020-09-09 A | 2020-11-02 A | 18 | 100% |  | 2020-09-15 | 2020-11-06 |  |  |  | Fardeen Ashraf; Shahir Zaoad; Transport Cost [0.1%] | 32h | 32h |  |  |
| 22 | 1.4.2 | Front End Design |  | 7d | 2021-04-05 A | 2021-04-13 A |  | 100% |  |  |  |  |  | start no earlier than 2021-04-05 | Shahir Zaoad; Sumaiya Kashmin Zim; Zannatul Ferdous | 168h | 168h |  |  |
| 23 | 1.4.3 | **Object Detection** |  | 62d | 2021-04-12 A | 2021-07-06 |  | 35% | 40.49d | 2020-11-09 | 2020-12-01 | 49d |  |  |  | 1392h | 256h | 4,023.82 |  |
| 24 | 1.4.3.1 | Image Pre Processing(Resizing Image, Background Subtraction) |  | 10d | 2021-04-12 A | 2021-06-25 A |  | 100% |  |  |  |  |  | start no earlier than 2021-04-12 | Fardeen Ashraf; Shahir Zaoad; Transport Cost [0.1%] | 112h | 112h |  |  |
| 25 | 1.4.3.2 | image preprocessing (Gaussian Filtering) + feature extraction of image (Geometrical feature, color feature) |  | 14d | 2021-06-17 A | 2021-07-06 |  | 50% | 7d |  |  | 49d |  | start no earlier than 2021-04-19 | Eusha Khan; Fardeen Ashraf; Shahir Zaoad; Sumaiya Kashmin Zim; Zannatul Ferdous | 280h | 144h |  |  |
| 26 | 1.4.3.3 | Model train and test with binary classification algorithms to detect fruit |  | 14d | 2021-04-19 | 2021-05-06 | 21 |  |  | 2020-11-09 | 2020-11-12 | 5.25d | 0d | start no earlier than 2021-04-19 | Eusha Khan; Fardeen Ashraf; Shahir Zaoad; Sumaiya Kashmin Zim; Zannatul Ferdous | 560h |  |  |  |
| 27 | 1.4.3.4 | Setting up Jetson Nano |  | 3d | 2021-05-07 | 2021-05-11 | 26 |  |  | 2020-11-13 | 2020-11-17 | 5.25d | 0d |  | Eusha Khan; Fardeen Ashraf; Raspberry Pi 4 Model B 4GB no1; Shahir Zaoad; Sumaiya Kashmin Zim; Zannatul Ferdous | 120h |  | 722.22 |  |
| 28 | 1.4.3.5 | Connecting Live data from camera |  | 3d | 2021-05-12 | 2021-05-14 | 27 |  |  | 2020-11-18 | 2020-11-20 | 5.25d | 0d |  | Eusha Khan; Fardeen Ashraf; Pi Camera; Raspberry Pi 4 Model B 4GB no1; Shahir Zaoad; Sumaiya Kashmin Zim; Web Camera; Zannatul Ferdous | 120h |  | 1,650.8 |  |
| 29 | 1.4.3.6 | Integrating image processing models with web camera |  | 5d | 2021-05-17 | 2021-05-21 | 28 |  |  | 2020-11-23 | 2020-11-27 | 5.25d | 0d |  | Eusha Khan; Fardeen Ashraf; Pi Camera; Raspberry Pi 4 Model B 4GB no1; Shahir Zaoad; Sumaiya Kashmin Zim; Web Camera; Zannatul Ferdous | 200h |  | 1,650.8 |  |
| 30 | 1.4.3.7 | Result | milestone | 0d | 2021-05-21 | 2021-05-21 | 29 |  |  | 2020-11-30 | 2020-12-01 | 0.75d | 0d |  |  |  |  |  |  |

| ID | WBS | Task | Type | Duration | Start | Finish | Predecessors | Complete | Remaining | Baseline 1 start | Baseline 1 finish | Total slack | Free slack | Constraint | Resources | Work | Actual work | Cost | Actual cost |
| --- | --- | --- | --- | --- | --- | --- | --- | --- | --- | --- | --- | --- | --- | --- | --- | --- | --- | --- | --- |
| 31 | 1.4.4 | **Freshness Detection** |  | 47d | 2021-05-24 A | 2021-07-27 |  | 40% | 28.02d | 2020-12-02 | 2020-12-24 | 34d |  |  |  | 1280h | 458h | 5,674.62 |  |
| 32 | 1.4.4.1 | Real time image Segmentation (Fuzzy segmentation, Refinement of defected region) + Real time image feature extraction (texture feature) + frontend(60%) |  | 14d | 2021-06-28 A | 2021-07-15 |  | 75% | 3.5d |  |  | 42d |  | start no earlier than 2021-05-24 | Eusha Khan; Fardeen Ashraf; Shahir Zaoad; Sumaiya Kashmin Zim; Zannatul Ferdous | 280h | 248h |  |  |
| 33 | 1.4.4.2 | Model train and test with binary classification algorithms to detect defection in fruit |  | 7d | 2021-05-24 A | 2021-06-01 | 30 | 75% | 1.75d | 2020-12-02 | 2020-12-07 | 0.75d | 0d |  | Eusha Khan; Fardeen Ashraf; Shahir Zaoad; Sumaiya Kashmin Zim; Zannatul Ferdous | 280h | 210h |  |  |
| 34 | 1.4.4.3 | Setting up Jetson Nano |  | 3d | 2021-06-02 | 2021-06-04 | 33 |  |  | 2020-12-08 | 2020-12-10 | 0.75d | 0d |  | Eusha Khan; Fardeen Ashraf; Raspberry Pi 4 Model B 4GB no1; Shahir Zaoad; Sumaiya Kashmin Zim; Zannatul Ferdous | 120h |  | 722.22 |  |
| 35 | 1.4.4.4 | Connecting Live data from camera |  | 3d | 2021-06-07 | 2021-06-09 | 34 |  |  | 2020-12-11 | 2020-12-15 | 0.75d | 0d |  | Eusha Khan; Fardeen Ashraf; Pi Camera; Raspberry Pi 4 Model B 4GB no1; Shahir Zaoad; Sumaiya Kashmin Zim; Web Camera; Zannatul Ferdous | 120h |  | 1,650.8 |  |
| 36 | 1.4.4.5 | Integrating image processing models with web camera |  | 5d | 2021-06-10 | 2021-06-16 | 35 |  |  | 2020-12-16 | 2020-12-22 | 0.75d | 0d |  | Eusha Khan; Fardeen Ashraf; Pi Camera; Raspberry Pi 4 Model B 4GB no1; Shahir Zaoad; Sumaiya Kashmin Zim; Web Camera; Zannatul Ferdous | 200h |  | 1,650.8 |  |
| 37 | 1.4.4.6 | Real time image preprocessing (background segmentation, filtering) |  | 7d | 2021-07-19 | 2021-07-27 |  |  |  |  |  | 34d |  | start no earlier than 2021-07-19 | Eusha Khan; Fardeen Ashraf; Pi Camera; Raspberry Pi 4 Model B 4GB no1; Shahir Zaoad; Sumaiya Kashmin Zim; Web Camera; Zannatul Ferdous | 280h |  | 1,650.8 |  |
| 38 | 1.4.4.7 | Result | milestone | 0d | 2021-06-16 | 2021-06-16 | 36 |  |  | 2020-12-23 | 2020-12-24 | 0.75d | 0d |  |  |  |  |  |  |
| 39 | 1.4.5 | **Integration** |  | 3d | 2021-06-17 | 2021-06-21 |  |  |  | 2020-12-25 | 2020-12-29 | 0.75d |  |  |  | 24h |  | 7,634.94 |  |
| 40 | 1.4.5.1 | Connecting Jetson Nano and Arduino |  | 1d | 2021-06-17 | 2021-06-17 | 38 |  |  | 2020-12-25 | 2020-12-25 | 0.75d | 0d |  | Fardeen Ashraf; Pi Camera; Raspberry Pi 4 Model B 4GB no1; Raspberry Pi 4 Model B 4GB no2; Web Camera | 8h |  | 3,817.47 |  |
| 41 | 1.4.5.2 | configuration for sending info between Jetson Nano and Arduino |  | 2d | 2021-06-18 | 2021-06-21 | 40 |  |  | 2020-12-28 | 2020-12-29 | 0.75d | 0d |  | Fardeen Ashraf; Pi Camera; Raspberry Pi 4 Model B 4GB no1; Raspberry Pi 4 Model B 4GB no2; Web Camera | 16h |  | 3,817.47 |  |
| 42 | 1.3.7 | **Defected food Pusher** |  | 41d | 2021-06-22 A | 2021-08-17 |  | 15% | 34.85d | 2020-12-30 | 2021-02-24 | 19d |  |  |  | 112h | 12h | 5,817.47 | 1,000 |
| 43 | 1.3.7.1 | Adjusting the Pusher with conveyer belt and servo |  | 1d | 2021-06-22 A | 2021-06-22 | 41 | 75% | 0.25d | 2020-12-30 | 2020-12-30 | 0d |  |  | Makeshift conveyer belt material; Servo motor; Sumaiya Kashmin Zim; Zannatul Ferdous | 16h | 12h | 1,000 | 1,000 |
| 44 | 1.3.7.2 | Automating the servo based on the result of Jetson Nano |  | 4d | 2021-06-23 | 2021-08-17 | 43 |  |  | 2020-12-31 | 2021-02-24 | 0d |  |  | Fardeen Ashraf; Makeshift conveyer belt material; Pi Camera; Raspberry Pi 4 Model B 4GB no1; Raspberry Pi 4 Model B 4GB no2; Servo motor; Sumaiya Kashmin Zim; Web Camera; Zannatul Ferdous | 96h |  | 4,817.47 |  |
| 45 | 1.4.6.3 | Development Finish | milestone | 0d | 2021-08-17 | 2021-08-17 | 44 |  |  |  |  | 19d |  |  |  |  |  |  |  |
| 46 | 1.4 | **Testing** |  | 17d | 2021-08-18 | 2021-09-09 |  |  |  | 2021-02-25 | 2021-03-03 | 0d |  |  |  | 680h |  |  |  |
| 47 | 1.4.1 | Real Time Testing Food Detection |  | 7d | 2021-08-18 | 2021-08-26 | 44 |  |  | 2021-02-25 | 2021-02-25 | 0d |  |  | Eusha Khan; Fardeen Ashraf; Shahir Zaoad; Sumaiya Kashmin Zim; Zannatul Ferdous | 280h |  |  |  |
| 48 | 1.4.2 | Real Time Testing of defection detection |  | 7d | 2021-08-27 | 2021-09-06 | 47 |  |  | 2021-02-26 | 2021-02-26 | 0d |  |  | Eusha Khan; Fardeen Ashraf; Shahir Zaoad; Sumaiya Kashmin Zim; Zannatul Ferdous | 280h |  |  |  |
| 49 | 1.4.3 | Overall Testing |  | 2d | 2021-09-07 | 2021-09-08 | 48 |  |  | 2021-03-01 | 2021-03-02 | 0d |  |  | Eusha Khan; Fardeen Ashraf; Shahir Zaoad; Sumaiya Kashmin Zim; Zannatul Ferdous | 80h |  |  |  |
| 50 | 1.4.4 | Final Testing |  | 1d | 2021-09-09 | 2021-09-09 | 49 |  |  | 2021-03-03 | 2021-03-03 | 0d |  |  | Eusha Khan; Fardeen Ashraf; Shahir Zaoad; Sumaiya Kashmin Zim; Zannatul Ferdous | 40h |  |  |  |
| 51 | 1.4.5 | Testing Complete | milestone | 0d | 2021-09-09 | 2021-09-09 | 50 |  |  | 2021-03-03 | 2021-03-03 | 0d |  |  |  |  |  |  |  |
| 52 | 1.5 | Documentation |  | 157d? | 2020-07-17 A | 2021-02-22 | 3 | 25% | 117.75d? | 2021-03-04 | 2021-03-04 | 143d |  | start no earlier than 2020-07-17 |  |  |  |  |  |
| 53 | 1.6 | Deployment |  | 1d? | 2021-09-10 | 2021-09-10 | 52, 51 |  |  | 2021-03-05 | 2021-03-05 | 0d |  |  |  |  |  |  |  |
| 54 | 1.7 | **Complete Project** |  | 1d | 2021-09-13 | 2021-09-13 | 53 |  |  | 2021-03-08 | 2021-03-08 | 0d |  |  |  | 40h |  |  |  |
| 55 | 1.8.1 | Completion Meeting |  | 1d | 2021-09-13 | 2021-09-13 |  |  |  | 2021-03-08 | 2021-03-08 | 0d |  |  | Eusha Khan; Fardeen Ashraf; Shahir Zaoad; Sumaiya Kashmin Zim; Zannatul Ferdous | 40h |  |  |  |
